# Plataforma Web para centralización de camas críticas de internación en hospitales de la Provincia de Santa Fe

Schedule from ProjectLibre, 2016-03-15 to 2016-12-20, 2 hours a day.

## Calendars

- sebas: Mon-Fri 18:00-21:00; Sat-Sun off. Exceptions (off unless hours are given): 2016-03-23 to 2016-03-25, 2016-05-24 to 2016-05-25, 2016-06-19 to 2016-06-20, 2016-07-07 to 2016-07-08, 2016-08-14 to 2016-08-15, 2016-10-09 to 2016-10-10, 2016-11-27 to 2016-11-28, 2016-12-07 to 2016-12-09.

## Resources

| Resource |
| --- |
| No Asignado |
| Sebastián Berra |

## Schedule

| ID | WBS | Task | Type | Duration | Start | Finish | Predecessors | Total slack | Constraint |
| --- | --- | --- | --- | --- | --- | --- | --- | --- | --- |
| 1 | 1 | Hito: Proyecto iniciado | milestone | 0d? | 2016-03-15 | 2016-03-15 |  | 114200d | start no earlier than 2016-03-15 |
| 2 | 2 | **Capacitación en los requisitos y tecnologías establecidas por la STG** |  | 23d? | 2016-03-15 | 2016-04-07 |  |  | start no earlier than 2016-03-15 |
| 3 | 2.1 | Obtención y lectura de los documentos relacionados a proyectos de software |  | 5d? | 2016-03-15 | 2016-03-18 |  |  |  |
| 4 | 2.2 | Recopilación de información necesaria para el inicio de proyecto |  | 4d? | 2016-03-18 | 2016-03-22 | 3 |  |  |
| 5 | 2.3 | Obtención de material de estudio de las tecnologías para desarrollo de software |  | 2d? | 2016-03-23 | 2016-03-28 | 4 |  |  |
| 6 | 2.4 | Capacitación en tecnologías de desarrollo de software establecidas |  | 12d? | 2016-03-28 | 2016-04-07 | 5 |  |  |
| 7 | 3 | **Análisis del contexto del alcance del proyecto** |  | 46.5d? | 2016-04-07 | 2016-05-20 |  |  |  |
| 8 | 3.1 | Relevamiento de los actores, sistemas y beneficios generales |  | 12d? | 2016-04-07 | 2016-04-19 | 6 |  |  |
| 9 | 3.2 | Análisis de requerimientos del Sistema de Emergencias Médicas 107 |  | 8d? | 2016-04-19 | 2016-04-26 | 8 |  |  |
| 10 | 3.3 | Obtención de requerimientos externos al 107 |  | 8d? | 2016-04-26 | 2016-05-03 | 9 |  |  |
| 11 | 3.4 | Prototipo Web inicial y presentación a usuarios |  | 12.5d? | 2016-05-04 | 2016-05-16 | 10 |  |  |
| 12 | 3.5 | Informe 1: Análisis y requerimientos generales |  | 6d? | 2016-05-16 | 2016-05-20 | 11 |  |  |
| 13 | 4 | Hito: Finalización del análisis general del proyecto | milestone | 0d? | 2016-05-20 | 2016-05-20 | 12 |  |  |
| 14 | 5 | **Análisis de sistemas en producción y requisitos del estado** |  | 32d? | 2016-05-20 | 2016-06-22 |  |  |  |
| 15 | 5.1 | Análisis de los sistemas en producción de la Sectorial de Informática |  | 12d? | 2016-05-20 | 2016-06-02 | 13 |  |  |
| 16 | 5.2 | Relevamiento de las funcionalidades de los sistemas de la Sectorial de Informática |  | 8d? | 2016-06-02 | 2016-06-09 | 15 |  |  |
| 17 | 5.3 | Análisis de los requisitos y relevamiento de funcionalidades en hospitales privados |  | 4d? | 2016-06-09 | 2016-06-14 | 16 |  |  |
| 18 | 5.4 | Análisis de los sistemas clientes de la Sectorial de Informática |  | 8d? | 2016-06-14 | 2016-06-22 | 17 |  |  |
| 19 | 6 | **Definición de la estructura de datos** |  | 18d? | 2016-06-22 | 2016-07-11 |  |  |  |
| 20 | 6.1 | Definir la estructura de datos |  | 6d? | 2016-06-22 | 2016-06-28 | 18 |  |  |
| 21 | 6.2 | Generar los scripts de creación e inicialización de datos |  | 6d? | 2016-06-28 | 2016-07-04 | 20 |  |  |
| 22 | 6.3 | Informe 2: Relevamiento de sistemas y definición de la estructura de datos |  | 6d? | 2016-07-04 | 2016-07-11 | 21 |  |  |
| 23 | 7 | Hito: Fin del relevamiento de sistemas y definición de la estructura de datos | milestone | 0d? | 2016-07-11 | 2016-07-11 | 22 |  |  |
| 24 | 8 | **Desarrollo de los Web Services** |  | 38d? | 2016-07-11 | 2016-08-16 |  |  |  |
| 25 | 8.1 | Programación de los web services |  | 36d? | 2016-07-11 | 2016-08-12 | 23 |  |  |
| 26 | 8.2 | Generar la documentación |  | 2d? | 2016-08-12 | 2016-08-16 | 25 |  |  |

| ID | WBS | Task | Type | Duration | Start | Finish | Predecessors |
| --- | --- | --- | --- | --- | --- | --- | --- |
| 27 | 9 | **Desarrollo de los clientes Web Services** |  | 48d? | 2016-08-17 | 2016-09-29 |  |
| 28 | 9.1 | Desarrollo de los clientes específicos para cada uno de los sistemas estudiados |  | 36d? | 2016-08-17 | 2016-09-19 | 26 |
| 29 | 9.2 | Desarrollo de clientes genéricos de ejemplo para publicar a efectores privados |  | 8d? | 2016-09-20 | 2016-09-27 | 28 |
| 30 | 9.3 | Informe 3: Web Services y clientes |  | 4d? | 2016-09-27 | 2016-09-29 | 29 |
| 31 | 10 | Hito: Finalización del desarrollo de los Web Services y los clientes | milestone | 0d? | 2016-09-29 | 2016-09-29 | 30 |
| 32 | 11 | **Desarrollo del sistema de consulta web** |  | 48d? | 2016-09-30 | 2016-11-15 |  |
| 33 | 11.1 | Revisión y mejora del prototipo |  | 24d? | 2016-09-30 | 2016-10-24 | 31 |
| 34 | 11.2 | Desarrollo definitivo |  | 12d? | 2016-10-25 | 2016-11-03 | 33 |
| 35 | 11.3 | Crear documentación de ayuda al usuario |  | 10d? | 2016-11-04 | 2016-11-14 | 34 |
| 36 | 11.4 | Informe 4: Sistema de consulta Web |  | 2d? | 2016-11-14 | 2016-11-15 | 35 |
| 37 | 12 | Hito: Fin del desarrollo del sistema de consulta Web | milestone | 0d? | 2016-11-15 | 2016-11-15 | 36 |
| 38 | 13 | **Implementación y prueba** |  | 32d? | 2016-11-16 | 2016-12-20 |  |
| 39 | 13.1 | Instalación de la base de datos, web services y la consulta web en los servidores de la STG |  | 4d? | 2016-11-16 | 2016-11-18 | 37 |
| 40 | 13.2 | Generar una serie de pruebas utilizando los clientes de los web services y la consulta web |  | 8d? | 2016-11-18 | 2016-11-25 | 39 |
| 41 | 13.3 | Informe final: Documentación y conclusiones del proyecto |  | 20d? | 2016-11-29 | 2016-12-20 | 40 |
| 42 | 14 | Hito: Documentación y conclusiones del proyecto entregados | milestone | 0d? | 2016-12-20 | 2016-12-20 | 41 |
